# Engineering Project 3 Plan

Schedule from MS Project, 2022-04-04 to 2022-06-23, costs in $, A marks actual dates.

## Calendars

- <New Resource 6>: Mon-Sat 08:00-12:00, 13:00-17:00; Sun off. Exceptions (off unless hours are given): 2022-04-16 08:00-12:00, 13:00-17:00.

## Resources

| Resource | Rate |
| --- | --- |
| Kaan Çeliktaş | 15 |
| Mert Altuntaş | 17 |
| Alperen Demirtürkoğlu | 15 |

## Schedule

| ID | WBS | Task | Type | Duration | Start | Finish | Predecessors | Complete | Remaining | Baseline start | Baseline finish | Baseline duration | Total slack | Constraint | Resources | Work | Actual work | Cost | Actual cost |
| --- | --- | --- | --- | --- | --- | --- | --- | --- | --- | --- | --- | --- | --- | --- | --- | --- | --- | --- | --- |
| 1 | 1 | External Dependencies | manual | 70d | 2022-04-04 | 2022-06-23 |  |  |  |  |  |  |  |  | Mert Altuntaş; Alperen Demirtürkoğlu; Kaan Çeliktaş | 1h |  | 15 |  |
| 2 | 2 | **Analysis** |  | 15d | 2022-04-04 A | 2022-04-16 |  | 100% | 0d |  |  |  |  |  |  | 89h | 89h | 1,351 | 1,351 |
| 3 | 2.1 | Scope Definition |  | 1d | 2022-04-04 A | 2022-04-04 A |  | 100% |  |  |  |  |  | start no earlier than 2022-04-04 | Alperen Demirtürkoğlu [25%]; Mert Altuntaş [25%]; Kaan Çeliktaş [50%] | 8h | 8h | 124 | 124 |
| 4 | 2.2 | Making Project Plan |  | 3d | 2022-04-05 A | 2022-04-07 A | 3 | 100% |  |  |  |  |  | finish no earlier than 2022-04-07 | Alperen Demirtürkoğlu [25%]; Mert Altuntaş [25%]; Kaan Çeliktaş [50%] | 24h | 24h | 372 | 372 |
| 5 | 2.3 | Commercializiation & Researching Marketplaces |  | 7d | 2022-04-08 A | 2022-04-15 A | 4 | 100% |  |  |  |  |  | finish no earlier than 2022-04-14 | Alperen Demirtürkoğlu | 56h | 56h | 840 | 840 |
| 6 | 2.4 | Financial situation calculations |  | 1d | 2022-04-16 A | 2022-04-16 A | 5 | 100% |  |  |  |  |  | finish no earlier than 2022-04-16 | Kaan Çeliktaş | 1h | 1h | 15 | 15 |
| 7 | 3 | **Development Stages** |  | 33d | 2022-04-18 | 2022-05-25 | 6 |  |  |  |  |  | 0d |  |  | 257h |  | 4,063 |  |
| 8 | 3.1 | **Client UI Design Stages** |  | 16d | 2022-04-18 | 2022-05-05 |  |  |  |  |  |  |  |  |  | 121h |  | 1,855 |  |
| 9 | 3.1.1 | **Installations** |  | 5d | 2022-04-18 | 2022-04-22 |  |  |  |  |  |  |  |  |  | 40h |  | 640 |  |
| 10 | 3.1.1.1 | Android Studio Configurations |  | 2d | 2022-04-18 | 2022-04-19 |  |  |  |  |  |  | 0d | finish no earlier than 2022-04-19 | Mert Altuntaş [50%]; Alperen Demirtürkoğlu [25%]; Kaan Çeliktaş [25%] | 16h |  | 256 |  |
| 11 | 3.1.1.2 | Virtual Machine Configurations |  | 2d | 2022-04-20 | 2022-04-21 | 10 |  |  | 2022-04-07 | 2022-04-07 | 1d | 0d |  | Alperen Demirtürkoğlu [25%]; Mert Altuntaş [50%]; Kaan Çeliktaş [25%] | 16h |  | 256 |  |
| 12 | 3.1.1.3 | Github Repository Configurations |  | 1d | 2022-04-22 | 2022-04-22 | 11 |  |  |  |  |  | 0d |  | Alperen Demirtürkoğlu [25%]; Mert Altuntaş [50%]; Kaan Çeliktaş [25%] | 8h |  | 128 |  |
| 13 | 3.1.2 | **Login & Signup Page Design** |  | 2d | 2022-04-23 | 2022-04-25 | 12 |  |  |  |  |  |  |  |  | 16h |  | 240 |  |
| 14 | 3.1.2.1 | Login Page Design |  | 1d | 2022-04-23 | 2022-04-23 |  |  |  |  |  |  | 0d |  | Alperen Demirtürkoğlu | 8h |  | 120 |  |
| 15 | 3.1.2.2 | Signup Page Design |  | 1d | 2022-04-25 | 2022-04-25 | 14 |  |  |  |  |  | 0d |  | Alperen Demirtürkoğlu | 8h |  | 120 |  |
| 16 | 3.1.3 | **General App Sections** |  | 9d | 2022-04-26 | 2022-05-05 | 15 |  |  |  |  |  |  |  |  | 65h |  | 975 |  |
| 17 | 3.1.3.1 | Group Chat Section Design |  | 3d | 2022-04-26 | 2022-04-28 |  |  |  |  |  |  | 0d |  | Alperen Demirtürkoğlu [25%]; Kaan Çeliktaş [75%] | 24h |  | 360 |  |
| 18 | 3.1.3.2 | Personal Chat Section Design |  | 3d | 2022-04-29 | 2022-05-02 | 17 |  |  |  |  |  | 0d |  | Alperen Demirtürkoğlu [25%]; Kaan Çeliktaş [75%] | 24h |  | 360 |  |
| 19 | 3.1.3.3 | Contacts List Section Design |  | 1d | 2022-05-03 | 2022-05-03 | 18 |  |  |  |  |  | 0d |  | Alperen Demirtürkoğlu [50%]; Kaan Çeliktaş [50%] | 8h |  | 120 |  |
| 20 | 3.1.3.4 | Profile Settings Section Design |  | 1d | 2022-05-04 | 2022-05-04 | 19 |  |  |  |  |  | 0d |  | Alperen Demirtürkoğlu [50%]; Kaan Çeliktaş [50%] | 8h |  | 120 |  |
| 21 | 3.1.3.5 | Message Requests List Section Design |  | 1d | 2022-05-05 | 2022-05-05 | 20 |  |  |  |  |  | 0d |  | Kaan Çeliktaş | 1h |  | 15 |  |
| 22 | 3.2 | **CFS** |  | 12d | 2022-05-06 | 2022-05-18 | 21 |  |  |  |  |  |  |  |  | 88h |  | 1,440 |  |
| 23 | 3.2.1 | **Account Management** |  | 6d | 2022-05-06 | 2022-05-12 |  |  |  |  |  |  |  |  |  | 48h |  | 792 |  |
| 24 | 3.2.1.1 | Login & Signup Functions Development |  | 3d | 2022-05-06 | 2022-05-09 |  |  |  |  |  |  | 0d |  | Mert Altuntaş [75%]; Kaan Çeliktaş [25%] | 24h |  | 396 |  |
| 25 | 3.2.1.2 | Logout Function Development |  | 2d | 2022-05-10 | 2022-05-11 | 24 |  |  |  |  |  | 0d |  | Mert Altuntaş [75%]; Kaan Çeliktaş [25%] | 16h |  | 264 |  |
| 26 | 3.2.1.3 | Phone Number Login Development |  | 1d | 2022-05-12 | 2022-05-12 | 25 |  |  |  |  |  | 0d |  | Mert Altuntaş [75%]; Alperen Demirtürkoğlu [25%] | 8h |  | 132 |  |

| ID | WBS | Task | Duration | Start | Finish | Predecessors | Total slack | Free slack | Constraint | Resources | Work | Cost |
| --- | --- | --- | --- | --- | --- | --- | --- | --- | --- | --- | --- | --- |
| 27 | 3.2.2 | **Message Module** | 6d | 2022-05-13 | 2022-05-18 | 26 |  |  |  |  | 40h | 648 |
| 28 | 3.2.2.1 | Message Sending Function | 1d | 2022-05-13 | 2022-05-13 |  | 0d |  |  | Mert Altuntaş [50%]; Kaan Çeliktaş [50%] | 8h | 128 |
| 29 | 3.2.2.2 | Message Delivering Function | 1d | 2022-05-14 | 2022-05-14 | 28 | 0d |  |  | Mert Altuntaş [50%]; Kaan Çeliktaş [50%] | 8h | 128 |
| 30 | 3.2.2.3 | Message Request Function | 1d | 2022-05-16 | 2022-05-16 | 29 | 0d |  |  | Mert Altuntaş [50%]; Kaan Çeliktaş [50%] | 8h | 128 |
| 31 | 3.2.2.4 | Group Chat Activity Development | 1d | 2022-05-17 | 2022-05-17 | 30 | 0d |  |  | Alperen Demirtürkoğlu [25%]; Mert Altuntaş [75%] | 8h | 132 |
| 32 | 3.2.2.5 | Online / Offline Status Function Development | 1d | 2022-05-18 | 2022-05-18 | 31 | 0d |  |  | Alperen Demirtürkoğlu [25%]; Mert Altuntaş [75%] | 8h | 132 |
| 33 | 3.3 | **Firebase DB Design** | 6d | 2022-05-19 | 2022-05-25 | 32 |  |  |  |  | 48h | 768 |
| 34 | 3.3.1 | Logging User Account Informations | 2d | 2022-05-19 | 2022-05-20 |  | 0d |  |  | Mert Altuntaş [50%]; Kaan Çeliktaş [50%] | 16h | 256 |
| 35 | 3.3.2 | Logging Chat Data | 2d | 2022-05-21 | 2022-05-23 | 34 | 0d |  |  | Mert Altuntaş [50%]; Kaan Çeliktaş [50%] | 16h | 256 |
| 36 | 3.3.3 | Transferring Files | 2d | 2022-05-24 | 2022-05-25 | 35 | 0d |  |  | Mert Altuntaş [50%]; Kaan Çeliktaş [50%] | 16h | 256 |
| 37 | 4 | **Testing** | 5d | 2022-05-26 | 2022-05-31 | 36 |  |  |  |  | 19h | 285 |
| 38 | 4.1 | **UI Testing** | 2d | 2022-05-26 | 2022-05-27 |  |  |  |  |  | 16h | 240 |
| 39 | 4.1.1 | Layout & Sizes Compatibility | 1d | 2022-05-26 | 2022-05-26 | 36 | 23d | 0d | start no earlier than 2022-05-26 | Alperen Demirtürkoğlu | 8h | 120 |
| 40 | 4.1.2 | Colors Compatibility | 1d | 2022-05-27 | 2022-05-27 | 39 | 23d | 0d |  | Alperen Demirtürkoğlu | 8h | 120 |
| 41 | 4.2 | **UX Testing** | 3d | 2022-05-26 | 2022-05-28 |  | 22d | 0d |  |  | 3h | 45 |
| 42 | 4.2.1 | Message Modules Controls | 1d | 2022-05-26 | 2022-05-26 | 36 | 22d | 0d | finish no earlier than 2022-04-08 | Kaan Çeliktaş | 1h | 15 |
| 43 | 4.2.2 | File Transmission Controls | 1d | 2022-05-27 | 2022-05-27 | 42 | 22d | 0d | finish no earlier than 2022-04-08 | Kaan Çeliktaş | 1h | 15 |
| 44 | 4.2.3 | Login & Logout Testing | 1d | 2022-05-28 | 2022-05-28 | 43 | 22d | 0d | finish no earlier than 2022-04-09 | Kaan Çeliktaş | 1h | 15 |
